# Salam DR Fortinet & F5 Implementation Project

Schedule from MS Project XML, 2024-09-22 to 2025-05-07, A marks actual dates.

## Calendars

- Standard: Mon-Fri 08:00-12:00, 13:00-17:00; Sat-Sun off. Exceptions (off unless hours are given): 2024-09-01 to 2025-10-23 08:00-12:00, 13:00-17:00 (working, recurring), 2024-09-01 to 2027-07-17 (days off, recurring).

## Resources

| Resource |
| --- |
| Salam |
| Barq Systems |

## Schedule

| ID | WBS | Task | Type | Duration | Start | Finish | Predecessors | Complete | Remaining | Baseline start | Baseline finish | Baseline duration | Total slack | Constraint | Resources | Work | Actual work |
| --- | --- | --- | --- | --- | --- | --- | --- | --- | --- | --- | --- | --- | --- | --- | --- | --- | --- |
| 1 | 1 | **Project Initiation** |  | 41d | 2024-09-22 A | 2024-11-17 A |  | 100% |  | 2024-09-22 | 2024-12-01 | 51d |  |  |  | 288h | 288h |
| 2 | 1.1 | PO Issuance |  | 1d | 2024-09-22 A | 2024-09-22 A |  | 100% |  | 2024-09-22 | 2024-09-22 |  |  | start no earlier than 2024-09-22 | Salam | 8h | 8h |
| 3 | 1.2 | Internal KOM | milestone | 0d | 2024-09-22 A | 2024-09-22 A | 2 | 100% |  | 2024-09-22 | 2024-09-22 | 1d |  |  | Barq Systems |  |  |
| 4 | 1.3 | Ordering & Shipping |  | 35d | 2024-09-30 A | 2024-11-17 A | 3FS+5d | 100% |  | 2024-09-30 | 2024-12-01 | 45d |  | finish no earlier than 2024-11-17 | Barq Systems | 280h | 280h |
| 5 | 2 | **Planning** |  | 107d | 2024-10-09 A | 2025-03-06 |  | 99% | 0.48d | 2024-10-09 | 2024-11-05 | 20d | 44d |  |  | 96h | 94.4h |
| 6 | 2.1 | Project KOM | manual | 1d | 2024-10-09 A | 2024-10-09 A |  | 100% |  | 2024-10-09 | 2024-10-09 | 1d |  |  |  |  |  |
| 7 | 2.2 | **Design** |  | 105d | 2024-10-13 A | 2025-03-06 |  | 99% | 0.48d | 2024-10-10 | 2024-11-05 | 19d | 44d |  |  | 96h | 94.4h |
| 8 | 2.2.1 | Submit Prerequisites |  | 7d | 2024-10-13 A | 2024-10-21 A | 6 | 100% |  | 2024-10-10 | 2024-10-20 | 7d |  |  | Salam | 56h | 56h |
| 9 | 2.2.2 | F5 Technical Meetings |  | 4d | 2024-10-21 A | 2024-10-27 A | 8 | 100% |  | 2024-10-21 | 2024-10-24 | 4d |  |  |  |  |  |
| 10 | 2.2.3 | Fortinet Technical Meetings |  | 4d | 2024-10-21 A | 2024-10-27 A | 8 | 100% |  | 2024-10-21 | 2024-10-24 | 4d |  |  | Salam | 32h | 32h |
| 11 | 2.2.4 | Salam to Provide the Required Prerequisites |  | 1d | 2024-10-28 A | 2025-01-28 | 10 | 80% | 0.2d | 2024-11-04 | 2024-11-04 | 1d | 71.5d |  | Salam | 8h | 6.4h |
| 12 | 2.2.5 | Site & Prerequisites Readiness Check |  | 28d | 2024-10-29 A | 2025-03-06 A | 11 | 100% |  | 2024-11-05 | 2024-11-05 | 1d |  |  |  |  |  |
| 13 | 3 | **Delivery** |  | 32d | 2024-11-18 A | 2024-12-31 A |  | 100% |  | 2024-12-02 | 2024-12-05 | 4d |  |  |  | 152h | 152h |
| 14 | 3.1 | Fortinet Delivery | milestone | 0d | 2024-11-27 A | 2024-11-27 A | 4 | 100% |  | 2024-12-02 | 2024-12-02 | 1d |  | start no earlier than 2024-11-18 | Barq Systems |  |  |
| 15 | 3.2 | F5 Delivery | milestone | 0d | 2024-11-18 A | 2024-11-18 A | 4 | 100% |  | 2024-12-02 | 2024-12-02 | 1d |  | start no earlier than 2024-11-27 | Barq Systems |  |  |
| 16 | 3.3 | Salam to Provide site access to Jeddah Site |  | 17d | 2024-12-03 A | 2024-12-25 A | 14, 15 | 100% |  | 2024-12-03 | 2024-12-04 | 2d |  |  | Salam | 136h | 136h |
| 17 | 3.4 | BARQ Systems to Deliver the Material to Jeddah Site |  | 2d | 2024-12-30 A | 2024-12-31 A | 16 | 100% |  | 2024-12-05 | 2024-12-05 | 1d |  |  | Barq Systems | 16h | 16h |
| 18 | 4 | **Implemntation** |  | 85d | 2024-12-30 A | 2025-04-27 |  | 47% | 44.84d | 2024-12-10 | 2025-03-02 | 59d | 0d |  |  | 288h | 216h |
| 19 | 4.1 | **Racking & Sating** |  | 67d | 2024-12-30 A | 2025-04-01 |  | 75% | 16.75d | 2024-12-10 | 2025-02-05 | 42d | 0d |  |  | 288h | 216h |
| 20 | 4.1.1 | **Fortinet** |  | 67d | 2024-12-30 A | 2025-04-01 |  | 31% | 46.38d | 2024-12-10 | 2025-01-22 | 32d | 0d |  |  | 104h | 32h |
| 21 | 4.1.1.1 | Mounting and Powering UP |  | 1d | 2024-12-30 A | 2025-01-01 A | 17FS+2d | 100% |  | 2024-12-10 | 2024-12-10 | 1d |  |  | Barq Systems | 8h | 8h |
| 22 | 4.1.1.2 | Cabeling and Physical Connectivity |  | 1d | 2025-01-08 A | 2025-01-08 A | 21FS+2d | 100% |  | 2024-12-15 | 2024-12-15 | 1d |  |  | Barq Systems | 8h | 8h |
| 23 | 4.1.1.3 | Retrive license and upgrade boxes |  | 1d | 2025-01-13 A | 2025-01-13 A | 22FS+2d | 100% |  | 2024-12-18 | 2024-12-18 | 1d |  |  | Barq Systems | 8h | 8h |
| 24 | 4.1.1.4 | Retrive and configure fortiguard automatic updates |  | 1d | 2025-01-15 A | 2025-01-15 A | 23FS+1d | 100% |  | 2024-12-22 | 2024-12-22 | 1d |  |  | Barq Systems | 8h | 8h |
| 25 | 4.1.1.5 | Salam to provide existing FW configuration file |  | 5d | 2025-03-18 | 2025-03-24 | 56 |  |  | 2024-12-25 | 2024-12-31 | 6d | 0d | start no earlier than 2025-01-27 | Salam | 40h |  |
| 26 | 4.1.1.6 | Work on the offline Migration |  | 2d | 2025-03-26 | 2025-03-27 | 25FS+1d |  |  | 2025-01-02 | 2025-01-05 | 2d | 0d |  | Barq Systems | 16h |  |
| 27 | 4.1.1.7 | Push and Validate configuration syntax |  | 2d | 2025-03-31 | 2025-04-01 | 26FS+1d |  |  | 2025-01-07 | 2025-01-08 | 2d | 0d |  | Barq Systems | 16h |  |

| ID | WBS | Task | Type | Duration | Start | Finish | Predecessors | Complete | Remaining | Baseline start | Baseline finish | Baseline duration | Total slack | Constraint | Resources | Work | Actual work |
| --- | --- | --- | --- | --- | --- | --- | --- | --- | --- | --- | --- | --- | --- | --- | --- | --- | --- |
| 28 | 4.1.2 | **F5** |  | 41d | 2024-12-30 A | 2025-02-24 A |  | 100% |  | 2024-12-10 | 2025-02-05 | 42d |  |  |  | 184h | 184h |
| 29 | 4.1.2.1 | Mounting and Powering UP | milestone | 0d | 2024-12-30 A | 2024-12-30 A | 17FS+2d | 100% |  | 2024-12-10 | 2024-12-10 | 1d |  |  | Barq Systems |  |  |
| 30 | 4.1.2.2 | Cabeling & Physical Connectivity and licensing the devices |  | 1d | 2025-01-07 A | 2025-01-07 A | 29FS+3d | 100% |  | 2024-12-16 | 2024-12-16 | 1d |  |  | Barq Systems | 8h | 8h |
| 31 | 4.1.2.3 | Intial configuration and configuring tenantes for the new F5 (R-series). |  | 1d | 2025-01-12 A | 2025-01-12 A | 30FS+2d | 100% |  | 2024-12-19 | 2024-12-19 | 1d |  |  | Barq Systems | 8h | 8h |
| 32 | 4.1.2.4 | Install latest and stable version of F5 software in F5OS 1.5.2. |  | 1d | 2025-01-13 A | 2025-01-13 A | 31 | 100% |  | 2024-12-22 | 2024-12-22 | 1d |  |  | Barq Systems | 8h | 8h |
| 33 | 4.1.2.5 | Install latest and stable version of F5 software in the tenant 17.1.3. |  | 1d | 2025-01-15 A | 2025-01-15 A | 32FS+1d | 100% |  | 2024-12-24 | 2024-12-24 | 1d |  |  | Barq Systems | 8h | 8h |
| 34 | 4.1.2.6 | HA configuration between two tenants for clustring (active/passive). |  | 2d | 2025-01-28 A | 2025-01-29 A | 33FS+2d | 100% |  | 2024-12-29 | 2024-12-30 | 2d |  | start no earlier than 2025-01-27 | Barq Systems | 16h | 16h |
| 35 | 4.1.2.7 | Integration between F5 tennatnts and (DNS and NTP). |  | 2d | 2025-02-03 A | 2025-02-04 A | 34FS+2d | 100% |  | 2025-01-02 | 2025-01-05 | 2d |  | start no earlier than 2025-01-27 | Barq Systems | 16h | 16h |
| 36 | 4.1.2.8 | Salam to provide Vlans IDs and Subnets IPs |  | 1d | 2025-01-21 A | 2025-02-05 A | 35 | 100% |  | 2025-01-06 | 2025-01-06 | 1d |  |  | Salam | 8h | 8h |
| 37 | 4.1.2.9 | Create vlans and self ips for communication between F5 and firewall. |  | 1d | 2025-02-09 A | 2025-02-10 A | 36FS+2d | 100% |  | 2025-01-09 | 2025-01-09 | 1d |  | start no earlier than 2025-01-27 | Barq Systems | 8h | 8h |
| 38 | 4.1.2.10 | Create vlans and self ips for communication between F5 and servers for each VLAN. |  | 1d | 2025-02-13 A | 2025-02-16 A | 37FS+3d | 100% |  | 2025-01-15 | 2025-01-15 | 1d |  |  | Barq Systems | 8h | 8h |
| 39 | 4.1.2.11 | Last Check point for the Applications |  | 1d | 2025-02-04 A | 2025-02-04 A | 38 | 100% |  | 2025-01-16 | 2025-01-16 | 1d |  |  | Salam | 8h | 8h |
| 40 | 4.1.2.12 | Configurations for nods to add the actual servers ips (up to 40 appliction). |  | 4d | 2025-02-05 A | 2025-02-10 A | 39 | 100% |  | 2025-01-19 | 2025-01-22 | 4d |  |  | Barq Systems | 32h | 32h |
| 41 | 4.1.2.13 | Configurations for pools adding the nodes to load balancing (up to 40 appliction). |  | 4d | 2025-02-13 A | 2025-02-18 A | 40FS+2d | 100% |  | 2025-01-27 | 2025-01-30 | 4d |  |  | Barq Systems | 32h | 32h |
| 42 | 4.1.2.14 | Configurations for virtual servers (up to 40 appliction). |  | 3d | 2025-02-20 A | 2025-02-24 A | 41FS+1d | 100% |  | 2025-02-03 | 2025-02-05 | 3d |  |  | Barq Systems | 24h | 24h |
| 43 | 4.2 | **Review and Testing** |  | 32d | 2025-02-25 A | 2025-04-09 |  | 5% | 30.4d | 2025-01-26 | 2025-02-16 | 16d | 0d |  |  |  |  |
| 44 | 4.2.1 | **Fortinet** |  | 6d | 2025-04-02 | 2025-04-09 |  |  |  | 2025-01-26 | 2025-02-02 | 6d | 0d |  |  |  |  |
| 45 | 4.2.1.1 | Review all the configuration. |  | 2d | 2025-04-02 | 2025-04-03 | 27 |  |  | 2025-01-26 | 2025-01-27 | 4d | 0d |  |  |  |  |
| 46 | 4.2.1.2 | Test configuration offline making sure everything is working. |  | 2d | 2025-04-08 | 2025-04-09 | 45FS+2d |  |  | 2025-01-30 | 2025-02-02 | 2d | 0d |  |  |  |  |
| 47 | 4.2.2 | **F5** |  | 7d | 2025-02-25 A | 2025-03-05 |  | 10% | 6.3d | 2025-02-09 | 2025-02-16 | 6d | 0d |  |  |  |  |
| 48 | 4.2.2.1 | Review all the configuration. |  | 2d | 2025-02-25 A | 2025-02-27 | 42FS+1d | 20% | 1.6d | 2025-02-09 | 2025-02-10 | 2d | 0d |  |  |  |  |
| 49 | 4.2.2.2 | Test configuration offline making sure everything is working. |  | 2d | 2025-03-04 | 2025-03-05 | 48FS+2d |  |  | 2025-02-13 | 2025-02-16 | 2d | 0d |  |  |  |  |
| 50 | 4.3 | **Go Live** |  | 28d | 2025-03-10 | 2025-04-16 |  |  |  | 2025-02-06 | 2025-02-26 | 15d | 0d |  |  |  |  |
| 51 | 4.3.1 | **Fortinet** |  | 5d | 2025-04-10 | 2025-04-16 |  |  |  | 2025-02-06 | 2025-02-12 | 5d | 0d |  |  |  |  |
| 52 | 4.3.1.1 | Downtime to Redirect the traffic to test if FW passing the traffic as expected. |  | 1d | 2025-04-10 | 2025-04-10 | 46 |  |  | 2025-02-06 | 2025-02-06 | 1d | 0d |  |  |  |  |
| 53 | 4.3.1.2 | Test configuration with customer making sure everything is working. |  | 3d | 2025-04-14 | 2025-04-16 | 52FS+1d |  |  | 2025-02-10 | 2025-02-12 | 3d | 0d |  |  |  |  |

| ID | WBS | Task | Duration | Start | Finish | Predecessors | Baseline start | Baseline finish | Baseline duration | Total slack | Resources | Work |
| --- | --- | --- | --- | --- | --- | --- | --- | --- | --- | --- | --- | --- |
| 54 | 4.3.2 | **F5** | 6d | 2025-03-10 | 2025-03-17 |  | 2025-02-19 | 2025-02-26 | 6d | 0d |  |  |
| 55 | 4.3.2.1 | Downtime to Redirect the traffic to hit F5 virtual server if needed. | 1d | 2025-03-10 | 2025-03-10 | 49FS+2d | 2025-02-19 | 2025-02-19 | 1d | 0d |  |  |
| 56 | 4.3.2.2 | Test configuration with customer making sure everything is working. | 2d | 2025-03-16 | 2025-03-17 | 55FS+3d | 2025-02-25 | 2025-02-26 | 2d | 0d |  |  |
| 57 | 4.4 | **Documentation** | 7d | 2025-04-17 | 2025-04-27 |  | 2025-02-20 | 2025-03-02 | 7d | 0d |  |  |
| 58 | 4.4.1 | Prepare and Approve LLD | 3d | 2025-04-17 | 2025-04-21 | 53, 56 | 2025-02-20 | 2025-02-24 | 3d | 0d |  |  |
| 59 | 4.4.2 | Prepare and Approve As-Built | 4d | 2025-04-22 | 2025-04-27 | 58 | 2025-02-25 | 2025-03-02 | 4d | 0d |  |  |
| 60 | 5 | **Handing Over** | 3d | 2025-04-28 | 2025-04-30 |  | 2025-03-03 | 2025-03-05 | 3d | 0d |  |  |
| 61 | 5.1 | Handover and Knowledge transfer to operation Team | 3d | 2025-04-28 | 2025-04-30 | 59 | 2025-03-03 | 2025-03-05 | 3d | 0d |  |  |
| 62 | 6 | **Closure** | 5d | 2025-05-01 | 2025-05-07 |  | 2025-02-27 | 2025-03-05 | 5d | 0d |  | 40h |
| 63 | 6.1 | Sign Off | 1d | 2025-05-01 | 2025-05-01 | 61 | 2025-02-27 | 2025-02-27 | 1d | 0d | Salam | 8h |
| 64 | 6.2 | Submit JCR | 3d | 2025-05-04 | 2025-05-06 | 63 | 2025-03-02 | 2025-03-04 | 3d | 0d | Salam | 24h |
| 65 | 6.3 | Share Customer Satisfaction Survey | 1d | 2025-05-07 | 2025-05-07 | 64 | 2025-03-05 | 2025-03-05 | 1d | 0d | Barq Systems | 8h |
