# Project Plan - Salam Tenable Security Center Implementation V1.1

Schedule from MS Project XML, 2024-12-25 to 2025-11-04, A marks actual dates.

## Calendars

- Standard: Mon-Thu 08:00-12:00, 13:00-17:00; Fri-Sat off; Sun 08:00-12:00, 13:00-17:00.

## Schedule

| ID | WBS | Task | Type | Duration | Start | Finish | Predecessors | Complete | Remaining | Actual start | Baseline start | Baseline finish | Total slack | Free slack | Constraint | Dependiencies |
| --- | --- | --- | --- | --- | --- | --- | --- | --- | --- | --- | --- | --- | --- | --- | --- | --- |
| 1 | 0 | **Tenable Security Center Project** |  | 143d | 2025-05-28 | 2025-11-04 |  | 9% | 104.22d | 2024-12-25 |  | 2025-02-28 |  |  |  |  |
| 2 | 1 | **Initiation** |  | 111d | 2024-12-25 A | 2024-12-26 |  | 43% | 1.14d |  | 2024-12-25 | 2024-12-29 |  |  |  |  |
| 3 | 1.1 | PO Issuance (23314) |  | 1d | 2024-12-25 A | 2024-12-25 A |  | 100% |  |  | 2024-12-25 | 2024-12-25 |  |  | finish no earlier than 2024-12-26 |  |
| 4 | 1.2 | Internal KOM |  | 1d | 2024-12-25 A | 2024-12-25 A | 3 | 100% |  |  | 2024-12-25 | 2024-12-25 |  |  |  |  |
| 5 | 1.3 | Partner KOM | manual | 1d | 2025-02-06 A | 2025-02-06 A | 4 | 100% |  |  |  |  |  |  |  |  |
| 6 | 1.4 | PIP approval by Salam |  | 4d | 2025-05-25 | 2025-05-28 |  |  |  |  | 2024-12-28 | 2024-12-29 | 114d |  | start no earlier than 2025-05-25 | sent to Jawad for approval |
| 7 | 2 | **Planning** |  | 5d | 2025-05-29 | 2025-06-02 |  |  |  |  |  |  |  |  |  |  |
| 8 | 2.1 | Project KOM |  | 1d | 2025-05-29 | 2025-05-29 |  |  |  |  | 2025-01-28 | 2025-01-28 | 109d | 0d | start no earlier than 2025-05-29 |  |
| 9 | 2.2 | Prerequisites Readiness | manual | 4d | 2025-06-01 | 2025-06-04 | 8 |  |  |  |  |  |  |  |  |  |
| 10 | 3 | **Design** |  | 20d | 2025-06-16 | 2025-07-13 |  |  |  |  |  |  |  |  |  | waiting from Tenable |
| 11 | 3.1 | Design Workshop | manual | 1d | 2025-06-16 | 2025-06-16 |  |  |  |  |  |  |  |  |  |  |
| 12 | 3.2 | HLD submission by Specilized Technology | manual | 3d | 2025-06-17 | 2025-06-19 | 11 |  |  |  |  |  |  |  |  |  |
| 13 | 3.3 | HLD review and approval by Salam | manual | 5d | 2025-06-22 | 2025-06-26 | 12 |  |  |  |  |  |  |  |  |  |
| 14 | 3.4 | LLD Submission by Specilized Technologies | manual | 1d | 2025-06-29 | 2025-06-29 | 13 |  |  |  |  |  |  |  |  |  |
| 15 | 3.5 | LLD review and approval by Salam |  | 5d | 2025-06-30 | 2025-07-06 | 14 |  |  |  |  |  | 82d | 0d | start no earlier than 2025-05-04 |  |
| 16 | 3.6 | MOP review and approval by Salam | manual | 5d | 2025-07-07 | 2025-07-13 | 15 |  |  |  |  |  |  |  |  |  |
| 17 | 4 | **Implementation** |  | 62d | 2025-07-14 | 2025-09-08 |  |  |  |  |  |  |  |  |  | Implementation |
| 18 | 4.0 | Prerequisites Readiness check | manual | 7d | 2025-07-14 | 2025-07-22 |  |  |  |  |  |  |  |  |  |  |
| 19 | 4.1 | **Resident Engineer& HW Deliver** |  | 1d | 2025-07-23 | 2025-07-23 |  |  |  |  |  |  |  |  |  |  |
| 20 | 4.1.1 | Resident Engineer (Operation- On-boarding) | manual | 1d | 2025-07-24 | 2025-07-24 |  |  |  |  |  |  |  |  |  |  |
| 21 | 4.2 | **Install and configure** |  | 4d | 2025-07-25 | 2025-08-05 |  |  |  |  |  |  |  |  |  |  |
| 22 | 4.2.1 | Install and configure up to twenty-seven (27) Tenable Nessus sensors, Configure scan zones and repositories | manual | 1d | 2025-08-06 | 2025-08-06 |  |  |  |  |  |  |  |  |  |  |
| 23 | 4.2.2 | Connect one (1) SMTP server, up to two (2) LDAP servers, up to three (3) out-of-the-box (OOTB) integrations(4)PAM |  | 1d | 2025-08-07 | 2025-08-07 | 22 |  |  |  |  |  | 61d | 0d | start no earlier than 2025-05-19 |  |
| 24 | 4.2.3 | Create asset list, Up to ten (10) standard scan policies |  | 1d | 2025-08-10 | 2025-08-10 | 23 |  |  |  |  |  | 61d | 0d | start no earlier than 2025-05-20 |  |
| 25 | 4.2.4 | Create up to eight (8) basic custom report, up to eight (8) dashboard or Assurance Report Card and up to eight (8) templates | manual | 1d | 2025-08-11 | 2025-08-11 | 24 |  |  |  |  |  |  |  |  |  |

Notes:
- 3: Owner/Department Name: Jawad Akthar
- 4: Owner/Department Name: Jawad Akthar
- 5: Owner/Department Name: Jawad Akthar
- 6: Owner/Department Name: Jawad Akthar
- 7: Owner/Department Name: Jawad Akthar / Mohammad Al Massimi/ Saed Abdullah
- 8: Owner/Department Name: Jawad Akthar / Saed Abdullah
- 9: Owner/Department Name: Mohammad AL Massimi
- 10: Owner/Department Name: Mohammad AL Massimi / Saed Abdullah
- 11: Owner/Department Name: Jawad Akthar/Saed Abdullah/Mohammad AL Massimi/ Mohammad ALQawasmi
- 12: Owner/Department Name: Saed Abdullah
- 13: Owner/Department Name: Mohammad AL Massimi
- 14: Owner/Department Name: Saed Abdullah
- 15: Owner/Department Name: Mohammad AL Massimi
- 16: Owner/Department Name: Mohammad AL Massimi
- 17: Owner/Department Name: Mohammad Al Qawasmi
- 18: Owner/Department Name: Mohammad Al Qawasmi
- 19: Owner/Department Name: Jawad / Saed Abdullah/ Syed Ashraf
- 21: Owner/Department Name: Mohammad Al Qawasmi/ Saed Abdullah

| ID | WBS | Task | Type | Duration | Start | Finish | Predecessors | Total slack | Free slack | Constraint | Owner/Department Name | Dependiencies |
| --- | --- | --- | --- | --- | --- | --- | --- | --- | --- | --- | --- | --- |
| 26 | 4.3 | **Operational Capabilities** |  | 4d | 2025-08-12 | 2025-08-12 |  |  |  |  | Mohammad Al Qawasmi/ Saed Abdullah |  |
| 27 | 4.3.1 | Validate successful software and plugins update, successful scan results and implemented solution | manual | 1d | 2025-08-13 | 2025-08-13 |  |  |  |  |  |  |
| 28 | 4.3.2 | Optimize reports and dashboards | manual | 1d | 2025-08-14 | 2025-08-14 | 27 |  |  |  |  |  |
| 29 | 4.3.3 | Tenable Security Center backup/restore and Disaster Recovery (DR) | manual | 1d | 2025-08-17 | 2025-08-17 | 28 |  |  |  |  |  |
| 30 | 4.3.4 | End-to-end testing of solution function | manual | 1d | 2025-08-18 | 2025-08-18 | 29 |  |  |  |  |  |
| 31 | 4.4 | **Enablement** |  | 26d | 2025-08-19 | 2025-09-01 |  |  |  |  | Mohammad Al Qawasmi/ Saed Abdullah |  |
| 32 | 4.4.1 | Vulnerability Lifecycle |  | 1d | 2025-09-02 | 2025-09-02 |  | 41d | 0d | start no earlier than 2025-09-02 |  |  |
| 33 | 4.4.2 | Scan Strategy |  | 1d | 2025-09-03 | 2025-09-03 | 32 | 41d | 0d | start no earlier than 2025-06-02 |  |  |
| 34 | 4.4.3 | Data Management and Scan Coverage | manual | 1d | 2025-09-04 | 2025-09-04 | 33 |  |  |  |  |  |
| 35 | 4.4.4 | Users Groups and Roles (Access Controls) | manual | 1d | 2025-09-07 | 2025-09-07 | 34 |  |  |  |  |  |
| 36 | 4.4.5 | Reporting to Stakeholders | manual | 1d | 2025-09-08 | 2025-09-08 | 35 |  |  |  |  |  |
| 37 | 4.5 | **Documentation** |  | 21d | 2025-09-09 | 2025-10-07 |  |  |  |  |  | Documentation |
| 38 | 4.5.1 | LLD Submission to Salam |  | 2d | 2025-09-09 | 2025-09-10 |  | 20d | 0d | start no earlier than 2025-09-09 | Saed Abdullah |  |
| 39 | 4.5.2 | LLD review and approval by salam |  | 5d | 2025-09-11 | 2025-09-17 | 38 | 20d | 0d |  | Mohammad AL Massimi |  |
| 40 | 4.5.3 | As-Built documentation Submission to Salam |  | 2d | 2025-09-18 | 2025-09-21 | 39 | 20d | 0d |  | Saed Abdullah |  |
| 41 | 4.5.4 | As-Built documentation review and approval |  | 6d | 2025-09-22 | 2025-09-29 | 40 | 20d | 0d |  | Mohammad AL Massimi |  |
| 42 | 4.5.5 | (MBSS) submission by Specialized Technology |  | 1d | 2025-09-30 | 2025-09-30 | 41 | 20d | 0d |  | Saed Abdullah |  |
| 43 | 4.5.6 | (MBSS) review and approval by Salam |  | 5d | 2025-10-01 | 2025-10-07 | 42 | 20d |  |  | Mohammad AL Massimi |  |
| 44 | 5 | **Handover** |  | 9d | 2025-10-08 | 2025-10-20 |  |  |  |  | Mohammad Al Qawasmi/ Saed Abdullah/ Majed Al Jummah | Documintation |
| 45 | 5.1 | Pre-Call | manual | 1d | 2025-10-08 | 2025-10-08 |  |  |  |  |  |  |
| 46 | 5.2 | Knowledge trasfer to Operation team as per check list submitted in SOW | manual | 1d | 2025-10-09 | 2025-10-09 | 45 |  |  |  |  |  |
| 47 | 5.3 | Handover to operation Team as per the check list submitted in SOW | manual | 5d | 2025-10-12 | 2025-10-16 | 46 |  |  |  |  |  |
| 48 | 5.4 | Initialization, Identification and Scanning Workshop |  | 1d | 2025-10-19 | 2025-10-19 | 47 | 11d | 0d | start no earlier than 2025-07-16 |  |  |
| 49 | 5.5 | Tuning and Optimization | manual | 1d | 2025-10-20 | 2025-10-20 | 48 |  |  |  |  |  |

| ID | WBS | Task | Duration | Start | Finish | Predecessors | Total slack | Constraint | Dependiencies | Owner/Department Name |
| --- | --- | --- | --- | --- | --- | --- | --- | --- | --- | --- |
| 50 | 6 | **Closure** | 11d | 2025-10-21 | 2025-11-04 |  |  |  | Handover |  |
| 51 | 6.1 | Sign Off | 4d | 2025-10-21 | 2025-10-26 |  | 0d | start no earlier than 2025-10-21 |  | Jawad Akthar |
| 52 | 6.2 | Submit JCR | 2d | 2025-10-27 | 2025-10-28 | 51 | 0d | start no earlier than 2025-07-24 |  | Jawad Akthar |
| 53 | 6.3 | Share Customer Satisfaction Survey | 5d | 2025-10-29 | 2025-11-04 | 52 | 0d | start no earlier than 2025-07-28 |  | Jawad Akthar |
